# ShopMetrics - Desarrollo de la plataforma

Schedule from MS Project XML, 2025-01-06 to 2025-10-31, costs in US$.
ShopMetrics

## Calendars

- Estándar: Mon-Fri 09:00-13:00, 15:00-19:00; Sat-Sun off.

## Resources

| Resource | Rate |
| --- | --- |
| Gerente de Sistemas (CTO) | 16.27 |
| Desarrollador | 14.64 |
| Gerente General (CEO) | 16.27 |

## Schedule

| ID | WBS | Task | Duration | Start | Finish | Predecessors | Total slack | Free slack | Resources | Work | Cost |
| --- | --- | --- | --- | --- | --- | --- | --- | --- | --- | --- | --- |
| 1 | 1 | **1. Definición y arquitectura** | 19.75d | 2025-01-06 | 2025-01-31 |  | 0d |  |  | 212h | 3,416.64 |
| 2 | 1.1 | Relevamiento funcional y alcance del producto | 8d | 2025-01-06 | 2025-01-15 |  | 0d |  | Gerente de Sistemas (CTO); Gerente General (CEO) [50%] | 96h | 1,561.92 |
| 3 | 1.2 | Arquitectura de la solución y elección del stack | 7d | 2025-01-16 | 2025-01-24 | 2 | 0d |  | Gerente de Sistemas (CTO) | 56h | 911.12 |
| 4 | 1.3 | Modelo de datos y diccionario | 5d | 2025-01-27 | 2025-01-31 | 3 | 0d |  | Gerente de Sistemas (CTO); Desarrollador [50%] | 60h | 943.6 |
| 5 | 2 | **2. Base de datos y cimientos** | 14.75d | 2025-02-03 | 2025-02-21 |  | 0d |  |  | 152h | 2,277.44 |
| 6 | 2.1 | Esquema, migraciones y series temporales | 8d | 2025-02-03 | 2025-02-12 | 4 | 0d |  | Desarrollador; Gerente de Sistemas (CTO) [50%] | 96h | 1,457.6 |
| 7 | 2.2 | Entorno de desarrollo y automatización de pruebas | 7d | 2025-02-13 | 2025-02-21 | 6 | 0d |  | Desarrollador | 56h | 819.84 |
| 8 | 3 | **3. Integración con sistemas externos** | 29.75d | 2025-02-24 | 2025-04-04 |  | 0d |  |  | 288h | 4,294.56 |
| 9 | 3.1 | Conectores con puntos de venta | 12d | 2025-02-24 | 2025-03-11 | 7 | 0d |  | Desarrollador; Gerente de Sistemas (CTO) [50%] | 144h | 2,186.4 |
| 10 | 3.2 | Ingesta de sensores de conteo | 10d | 2025-03-12 | 2025-03-25 | 9 | 0d |  | Desarrollador | 80h | 1,171.2 |
| 11 | 3.3 | Monitoreo de salud de las integraciones | 8d | 2025-03-26 | 2025-04-04 | 10 | 0d |  | Desarrollador | 64h | 936.96 |
| 12 | 4 | **4. Motor de métricas e indicadores** | 19.75d | 2025-04-07 | 2025-05-02 |  | 0d |  |  | 208h | 3,123.36 |
| 13 | 4.1 | Cálculo de tráfico, conversión, ventas y vacancia | 12d | 2025-04-07 | 2025-04-22 | 11 | 0d |  | Desarrollador; Gerente de Sistemas (CTO) [50%] | 144h | 2,186.4 |
| 14 | 4.2 | Agregados por hora, zona y locatario | 8d | 2025-04-23 | 2025-05-02 | 13 | 0d |  | Desarrollador | 64h | 936.96 |
| 15 | 5 | **5. Panel web del centro** | 27.75d | 2025-05-05 | 2025-06-11 |  | 0d |  |  | 224h | 3,279.36 |
| 16 | 5.1 | Sistema de diseño y navegación | 6d | 2025-05-05 | 2025-05-12 | 14 | 0d |  | Desarrollador | 48h | 702.72 |
| 17 | 5.2 | Tablero de indicadores y series | 12d | 2025-05-13 | 2025-05-28 | 16 | 0d |  | Desarrollador | 96h | 1,405.44 |
| 18 | 5.3 | Mapa del centro y ficha de locatarios | 10d | 2025-05-29 | 2025-06-11 | 17 | 0d |  | Desarrollador | 80h | 1,171.2 |
| 19 | 6 | **6. Motor de reglas y alertas** | 24.75d | 2025-06-12 | 2025-07-16 |  | 0d |  |  | 240h | 3,578.8 |
| 20 | 6.1 | Definición y evaluación de reglas por umbral | 10d | 2025-06-12 | 2025-06-25 | 18 | 0d |  | Desarrollador; Gerente de Sistemas (CTO) [50%] | 120h | 1,822 |
| 21 | 6.2 | Centro de alertas y ciclo de atención | 10d | 2025-06-26 | 2025-07-09 | 20 | 0d |  | Desarrollador | 80h | 1,171.2 |
| 22 | 6.3 | Canales de notificación | 5d | 2025-07-10 | 2025-07-16 | 21 | 0d |  | Desarrollador | 40h | 585.6 |
| 23 | 7 | **7. Modelos de Machine Learning** | 29.75d | 2025-06-26 | 2025-08-06 |  | 33d |  |  | 240h | 3,904.8 |
| 24 | 7.1 | Predicción de riesgo de vacancia | 10d | 2025-06-26 | 2025-07-09 | 20 | 33d | 0.25d | Gerente de Sistemas (CTO) | 80h | 1,301.6 |
| 25 | 7.2 | Recomendación de mix de locatarios | 8d | 2025-07-10 | 2025-07-21 | 24 | 33d | 0.25d | Gerente de Sistemas (CTO) | 64h | 1,041.28 |
| 26 | 7.3 | Detección de anomalías en la operación | 12d | 2025-07-22 | 2025-08-06 | 25 | 33d |  | Gerente de Sistemas (CTO) | 96h | 1,561.92 |

| ID | WBS | Task | Type | Duration | Start | Finish | Predecessors | Total slack | Resources | Work | Cost |
| --- | --- | --- | --- | --- | --- | --- | --- | --- | --- | --- | --- |
| 27 | 8 | **8. Portal del locatario** |  | 16.75d | 2025-07-17 | 2025-08-08 |  | 0d |  | 136h | 1,991.04 |
| 28 | 8.1 | Tablero del local y comparación con la categoría |  | 12d | 2025-07-17 | 2025-08-01 | 22 | 0d | Desarrollador | 96h | 1,405.44 |
| 29 | 8.2 | Consentimiento sobre el uso de datos |  | 5d | 2025-08-04 | 2025-08-08 | 28 | 0d | Desarrollador | 40h | 585.6 |
| 30 | 9 | **9. Vista móvil de operaciones** |  | 15.75d | 2025-08-11 | 2025-09-01 |  | 0d |  | 128h | 1,873.92 |
| 31 | 9.1 | Resolución de alertas en terreno |  | 10d | 2025-08-11 | 2025-08-22 | 29 | 0d | Desarrollador | 80h | 1,171.2 |
| 32 | 9.2 | Historial de turno del operario |  | 6d | 2025-08-25 | 2025-09-01 | 31 | 0d | Desarrollador | 48h | 702.72 |
| 33 | 10 | **10. Seguridad, permisos y auditoría** |  | 14.75d | 2025-09-02 | 2025-09-22 |  | 0d |  | 152h | 2,277.44 |
| 34 | 10.1 | Autenticación y matriz de permisos |  | 8d | 2025-09-02 | 2025-09-11 | 32 | 0d | Desarrollador; Gerente de Sistemas (CTO) [50%] | 96h | 1,457.6 |
| 35 | 10.2 | Auditoría de accesos a datos sensibles |  | 7d | 2025-09-12 | 2025-09-22 | 34 | 0d | Desarrollador | 56h | 819.84 |
| 36 | 11 | **11. Pruebas y salida a producción** |  | 28.75d | 2025-09-23 | 2025-10-31 |  | 0d |  | 388h | 5,934.6 |
| 37 | 11.1 | Integración de los modelos de ML en el panel y las alertas |  | 6d | 2025-09-23 | 2025-09-30 | 35, 26 | 0d | Desarrollador | 48h | 702.72 |
| 38 | 11.2 | Pruebas integrales y corrección |  | 12d | 2025-10-01 | 2025-10-16 | 37 | 0d | Desarrollador; Gerente de Sistemas (CTO) | 192h | 2,967.36 |
| 39 | 11.3 | Documentación y manual de uso |  | 5d | 2025-10-17 | 2025-10-23 | 38 | 0d | Desarrollador | 40h | 585.6 |
| 40 | 11.4 | Despliegue y puesta en marcha |  | 6d | 2025-10-24 | 2025-10-31 | 39 | 0d | Gerente de Sistemas (CTO); Desarrollador; Gerente General (CEO) [25%] | 108h | 1,678.92 |
| 41 | 12 | Plataforma lista para salir al mercado | milestone | 0d | 2025-10-31 | 2025-10-31 | 40 | 0d |  |  |  |
